# TMULT — Terminal Multiuso (Porto do Açu) — Edifício Administrativo

Schedule from MS Project XML, 2026-10-01 to 2027-02-10.

## Schedule

| ID | Task | Duration | Start | Finish | Predecessors | Total slack |
| --- | --- | --- | --- | --- | --- | --- |
| 1 | TMULT — TERMINAL MULTIUSO (PORTO DO AÇU) — EDIFÍCIO ADMINISTRATIVO (132 DIAS CPM) | 132d | 2026-10-01 | 2027-02-10 |  |  |
| 2 | A01 MOB CANTEIRO | 7d | 2026-10-01 | 2026-10-08 |  | 0d |
| 3 | A02 ESCAV INFRA | 4d | 2026-10-08 | 2026-10-12 | 2 | 0d |
| 4 | A03 SAPATAS CONC | 5d | 2026-10-12 | 2026-10-17 | 3 | 0d |
| 5 | A04 BALDRAMES CONC | 6d | 2026-10-17 | 2026-10-23 | 4 | 0d |
| 6 | A05 IMPERM BALDRAME | 2d | 2026-10-23 | 2026-10-25 | 5 | 0d |
| 7 | A06 REATERRO INFRA | 2d | 2026-10-25 | 2026-10-27 | 6 | 0d |
| 8 | A07 PILARES SUPRA | 7d | 2026-10-27 | 2026-11-03 | 7 | 0d |
| 9 | A08 VIGAS LAJE FORMA | 6d | 2026-11-03 | 2026-11-09 | 8 | 0d |
| 10 | A09 CONCRET LAJE H12 | 1d | 2026-11-09 | 2026-11-10 | 9 | 0d |
| 11 | A10 CURA DESFORMA | 12d | 2026-11-10 | 2026-11-22 | 10 | 0d |
| 12 | A11 ESTRUT TERCAS COB | 7d | 2026-11-22 | 2026-11-29 | 11 | 0.8d |
| 13 | A12 ALVENARIA VEDACAO | 15d | 2026-11-22 | 2026-12-07 | 11 | 0d |
| 14 | A13 TELHAS SANDWICH PLAT | 7d | 2026-12-07 | 2026-12-14 | 12, 13 | 0d |
| 15 | A14 ELET EMBUTIDA | 7d | 2026-12-14 | 2026-12-21 | 14 | 0.2d |
| 16 | A15 HIDR EMBUTIDA | 7d | 2026-12-14 | 2026-12-21 | 14 | 0d |
| 17 | A16 TESTE HIDROSTATICO 72H | 2d | 2026-12-21 | 2026-12-23 | 16 | 0d |
| 18 | A17 EMBOCO REBOCO | 10d | 2026-12-23 | 2027-01-02 | 17, 15 | 0d |
| 19 | A18 IMPERM WCS | 2d | 2027-01-02 | 2027-01-04 | 18 | 0.2d |
| 20 | A19 CONTRAPISO | 4d | 2027-01-02 | 2027-01-06 | 18 | 0d |
| 21 | A20 INFRA DUTOS HVAC | 7d | 2027-01-02 | 2027-01-09 | 18 | 1d |
| 22 | A21 ESQUADRIAS FIX | 6d | 2027-01-02 | 2027-01-08 | 18 | 1.1d |
| 23 | A22 PISO PORCELANATO | 10d | 2027-01-06 | 2027-01-16 | 20, 19 | 0d |
| 24 | A23 FIACAO TELECOM | 7d | 2027-01-02 | 2027-01-09 | 18 | 1d |
| 25 | A24 RODAPES ACAB | 3d | 2027-01-16 | 2027-01-19 | 23 | 0d |
| 26 | A25 PINTURA 1A DEMAO | 4d | 2027-01-19 | 2027-01-23 | 25, 21, 22, 24 | 0d |
| 27 | A26 APARELHOS HVAC | 4d | 2027-01-23 | 2027-01-27 | 26 | 0d |
| 28 | A27 LOUCAS METAIS | 4d | 2027-01-23 | 2027-01-27 | 26 | 0d |
| 29 | A28 LUMINARIAS ESPELHOS | 4d | 2027-01-23 | 2027-01-27 | 26 | 0d |
| 30 | A29 PINTURA FINAL | 5d | 2027-01-27 | 2027-02-01 | 27, 28, 29 | 0d |
| 31 | A30 COMISSIONAMENTO | 4d | 2027-02-01 | 2027-02-05 | 30 | 0d |
| 32 | A31 LIMPEZA ENTREGA | 5d | 2027-02-05 | 2027-02-10 | 31 | 0d |
